# b4ubuild_sample_07a

Schedule from MS Project, 2008-06-01 to 2008-09-03.
Luxury Custom Home Construction Schedule
B4UBUILD.COM - http://www.b4ubuild.com
This file is a partial schedule for trial use & inspection purposes only. Should you wish to purchase the file that contains the entire schedule, visit: / www.B4UBUILD.COM / You may also send a check or money order in the amount of $20.00 (USD) payable to: / B4UBUILD.COM / 10 Owl Branch Lane / Parkton, MD 21120-9522 / Please include your email address and registered owner contact information in your correspondence so that the full working file and a password, which unlocks it, may be sent to you.

## Calendars

- Standard: Mon-Fri 08:00-12:00, 13:00-17:00; Sat-Sun off.

## Resources

| Resource |
| --- |
| Sales Department |
| Construction Dept. |
| Sales Dept. |
| Client |
| County |
| County Sediment Control Inspector |
| Sediment Control Inspector |
| Department of Permits & Licenses |
| Building Inspector |
| Mason |
| Civil Engineer |
| Concrete Subcontractor |
| Concrete Subcontractor |
| Excavation Subcontractor |
| Masonry Subcontractor |
| Block Masonry Subcontractor |
| Steel Supplier |
| Lumber Supplier |
| Waterproofing Subcontractor |
| Lender |
| Framing Subcontractor |
| Pest Control Subcontractor |
| Mechanical Subcontractor |
| Plumbing Subcontractor |
| Field Superintendent |
| Plumbing Inspector |
| Electrical Subcontractor |
| Alarm Subcontractor |
| Client's Subcontractor |
| Electrical Inspector |
| Roofing Subcontractor |
| Exterior Trim Subcontractor |
| Brick Masonry Subcontractor |
| Insulation Subcontractor |
| BGE Inspector |
| Drywall Subcontractor |
| Painting Subcontractor |
| Trim Supplier |
| Interior Trim Subcontractor |
| Cabinet Subcontractor |
| Deck Subcontractor |
| Driveway Subcontractor |
| Seeding Subcontractor |
| Hardware Subcontractor |
| Mirror Subcontractor |
| Tile Subcontractor |
| Hardwood Floor Subcontractor |
| Carpet Subcontractor |
| Department of Licensing & Permits |
| Paint Subcontractor |
| Window Cleaning Subcontractor |
| Cleaning Subcontractor |
| Superintendent |
| Builder |
| Punch Out Crew |
| Stucco Subcontractor |
| Sales Manager |
| Construction Manager |
| Project Manager |

## Schedule

| ID | WBS | Task | Type | Duration | Start | Finish | Predecessors | Total slack | Free slack | Constraint | Resources | Work |
| --- | --- | --- | --- | --- | --- | --- | --- | --- | --- | --- | --- | --- |
| 1 | 1 | **Contracts** |  | 0d | 2008-06-01 | 2008-06-01 |  | 0d |  |  |  |  |
| 2 | 1.1 | Supply Lot Sale Agreement | milestone | 0d | 2008-06-01 | 2008-06-01 |  | 68d |  |  | Builder |  |
| 3 | 1.2 | Supply Construction Agreement | milestone | 0d | 2008-06-01 | 2008-06-01 |  | 0d |  |  | Builder |  |
| 4 | 1.3 | Supply Contract Plans | milestone | 0d | 2008-06-01 | 2008-06-01 | 3 | 4d | 0d |  | Builder |  |
| 5 | 1.4 | Supply Contract Specifications | milestone | 0d | 2008-06-01 | 2008-06-01 | 3 | 0d |  |  | Builder |  |
| 6 | 1.5 | Supply Contract Site Plan | milestone | 0d | 2008-06-01 | 2008-06-01 | 3 | 19d | 15d |  | Builder |  |
| 7 | 1.6 | Secure Financing | milestone | 0d | 2008-06-01 | 2008-06-01 |  | 68d |  |  | Client |  |
| 8 | 1.7 | Construction Loan Settlement | milestone | 0d | 2008-06-01 | 2008-06-01 |  | 68d |  |  | Client |  |
| 9 | 2 | **Document Review & Revision** |  | 25d | 2008-06-02 | 2008-07-04 |  | 0d |  |  |  | 328h |
| 10 | 2.1 | Review & Finalize Plans |  | 15d | 2008-06-02 | 2008-06-20 | 4 | 4d | 0d |  | Builder | 120h |
| 11 | 2.2 | Review & Finalize Specifications |  | 20d | 2008-06-02 | 2008-06-27 | 5 | 0d |  |  | Builder | 160h |
| 12 | 2.3 | Review & Finalize Site Plan |  | 1d | 2008-06-23 | 2008-06-23 | 6, 10 | 4d |  |  | Builder | 8h |
| 13 | 2.4 | Print Construction Drawings |  | 5d | 2008-06-30 | 2008-07-04 | 10, 11, 12 | 0d |  |  | Builder | 40h |
| 14 | 2.5 | Approve Revised Plans | milestone | 0d | 2008-07-04 | 2008-07-04 | 13 | 2d | 0d |  | Client |  |
| 15 | 2.6 | Approve Revised Specifications | milestone | 0d | 2008-07-04 | 2008-07-04 | 13 | 2d | 0d |  | Client |  |
| 16 | 2.7 | Approve Revised Site Plan | milestone | 0d | 2008-07-04 | 2008-07-04 | 13 | 2d | 0d |  | Client |  |
| 17 | 3 | **Bids & Contracts** |  | 24d | 2008-07-07 | 2008-08-07 |  | 19d |  |  |  | 248h |
| 18 | 3.1 | Make Copies of Plans |  | 3d | 2008-07-07 | 2008-07-09 | 14 | 19d | 0d |  | Builder | 24h |
| 19 | 3.2 | Make Copies of Specifications |  | 2d | 2008-07-07 | 2008-07-08 | 15 | 20d | 1d |  | Builder | 16h |
| 20 | 3.3 | Distribute Plans & Specifications |  | 1d | 2008-07-10 | 2008-07-10 | 18, 19 | 19d | 0d | start no earlier than 1996-08-17 | Builder | 8h |
| 21 | 3.4 | Receive Bids |  | 10d | 2008-07-11 | 2008-07-24 | 20 | 19d | 0d | start no earlier than 1996-08-17 | Builder | 80h |
| 22 | 3.5 | **Review Bids** |  | 5d | 2008-07-25 | 2008-07-31 |  | 19d |  |  |  | 80h |
| 23 | 3.5.1 | Sales |  | 5d | 2008-07-25 | 2008-07-31 | 21 | 19d | 0d |  | Builder | 40h |
| 24 | 3.5.2 | Construction |  | 5d | 2008-07-25 | 2008-07-31 | 21 | 24d |  |  | Builder | 40h |
| 25 | 3.6 | Execute Subcontractor Agreements |  | 5d | 2008-08-01 | 2008-08-07 | 23 | 19d |  | start no earlier than 1996-08-17 | Builder | 40h |

| ID | WBS | Task | Type | Duration | Start | Finish | Predecessors | Total slack | Free slack | Resources | Work |
| --- | --- | --- | --- | --- | --- | --- | --- | --- | --- | --- | --- |
| 26 | 4 | **Grading & Building Permits** |  | 17d | 2008-07-07 | 2008-07-29 |  | 0d |  |  | 208h |
| 27 | 4.1 | Schedule lot stake-out |  | 1d | 2008-07-07 | 2008-07-07 | 13 | 0d |  | Builder | 8h |
| 28 | 4.2 | Stake lot |  | 1d | 2008-07-11 | 2008-07-11 | 27FS+3d | 0d |  | Civil Engineer | 8h |
| 29 | 4.3 | File Grading Permit Application |  | 1d | 2008-07-07 | 2008-07-07 | 16 | 3d |  | Builder | 8h |
| 30 | 4.4 | File Building Permit Application |  | 3d | 2008-07-07 | 2008-07-09 | 14, 15, 16 | 2d | 0d | Builder | 24h |
| 31 | 4.5 | Post Lot Identification |  | 1d | 2008-07-14 | 2008-07-14 | 28, 29, 30 | 0d |  | Builder | 8h |
| 32 | 4.6 | Meet Sediment Control Inspector |  | 1d | 2008-07-15 | 2008-07-15 | 29FS+2d, 28, 31 | 0d |  | Builder | 8h |
| 33 | 4.7 | Walk Lot w/ Owner |  | 1d | 2008-07-16 | 2008-07-16 | 32 | 0d |  | Builder | 8h |
| 34 | 4.8 | Install Construction Entrance |  | 1d | 2008-07-17 | 2008-07-17 | 32, 33 | 1d |  | Excavation Subcontractor | 8h |
| 35 | 4.9 | Install Sediment Controls |  | 2d | 2008-07-17 | 2008-07-18 | 32, 33 | 0d |  | Excavation Subcontractor | 16h |
| 36 | 4.10 | Sediment Control Insp. |  | 1d | 2008-07-21 | 2008-07-21 | 34, 35 | 0d |  | Sediment Control Inspector | 8h |
| 37 | 4.11 | Grading Permit Issued |  | 1d | 2008-07-22 | 2008-07-22 | 36 | 0d |  | Sediment Control Inspector | 8h |
| 38 | 4.12 | County Permit Process |  | 10d | 2008-07-10 | 2008-07-23 | 30 | 3d | 0d | Department of Permits & Licenses | 80h |
| 39 | 4.13 | Building Permit Approved |  | 1d | 2008-07-24 | 2008-07-24 | 38, 37 | 3d | 0d | Department of Permits & Licenses | 8h |
| 40 | 4.14 | Pay Permit Fees and Excise Taxes |  | 1d | 2008-07-29 | 2008-07-29 | 39FS+2d | 26d | 0d | Builder | 8h |
| 41 | 4.15 | Building Permit Issued | milestone | 0d | 2008-07-29 | 2008-07-29 | 40 | 26d |  | Department of Permits & Licenses |  |
| 42 | 5 | **Site Work** |  | 7d | 2008-07-23 | 2008-07-31 |  | 0d |  |  | 64h |
| 43 | 5.1 | Clear Lot |  | 3d | 2008-07-23 | 2008-07-25 | 37 | 0d |  | Excavation Subcontractor | 24h |
| 44 | 5.2 | Strip Topsoil & Stockpile |  | 1d | 2008-07-28 | 2008-07-28 | 43 | 27d |  | Excavation Subcontractor | 8h |
| 45 | 5.3 | Stake Lot for Excavation |  | 1d | 2008-07-28 | 2008-07-28 | 43 | 0d |  | Civil Engineer | 8h |
| 46 | 5.4 | Rough grade lot |  | 1d | 2008-07-29 | 2008-07-29 | 43, 45 | 0d |  | Excavation Subcontractor | 8h |
| 47 | 5.5 | Excavate for foundation |  | 2d | 2008-07-30 | 2008-07-31 | 39, 45, 43, 46 | 0d |  | Excavation Subcontractor | 16h |
| 48 | 6 | **Foundation** |  | 24d | 2008-08-01 | 2008-09-03 |  | 0d |  |  | 208h |
| 49 | 6.1 | Layout footings |  | 1d | 2008-08-01 | 2008-08-01 | 47 | 0d |  | Concrete Subcontractor | 8h |
| 50 | 6.2 | Dig Footings & Install Reinforcing |  | 1d | 2008-08-04 | 2008-08-04 | 49 | 0d |  | Concrete Subcontractor | 8h |
| 51 | 6.3 | Footing Inspection | milestone | 0d | 2008-08-04 | 2008-08-04 | 50 | 0d |  | Building Inspector |  |
| 52 | 6.4 | Pour footings |  | 1d | 2008-08-05 | 2008-08-05 | 51 | 0d |  | Concrete Subcontractor | 8h |
| 53 | 6.5 | Pin Footings |  | 1d | 2008-08-06 | 2008-08-06 | 52 | 0d |  | Civil Engineer | 8h |
| 54 | 6.6 | Stock Block, Mortar, Sand |  | 1d | 2008-08-07 | 2008-08-07 | 53 | 0d |  | Block Masonry Subcontractor | 8h |
| 55 | 6.7 | Build Block Foundation |  | 15d | 2008-08-08 | 2008-08-28 | 53, 54 | 0d |  | Block Masonry Subcontractor | 120h |
| 56 | 6.8 | Foundation Certification | milestone | 0d | 2008-08-28 | 2008-08-28 | 55 | 4d | 0d | Civil Engineer |  |
| 57 | 6.9 | Draw #1 (Location Survey) | milestone | 0d | 2008-08-28 | 2008-08-28 | 56 | 4d |  | Lender |  |
| 58 | 6.10 | Fill Block Cores w/ Concrete |  | 1d | 2008-08-29 | 2008-08-29 | 55 | 0d |  | Block Masonry Subcontractor | 8h |
| 59 | 6.11 | Steel Delivery |  | 1d | 2008-09-01 | 2008-09-01 | 58 | 0d |  | Steel Supplier | 8h |
| 60 | 6.12 | Set Lintels, Bolts, Cap Block |  | 2d | 2008-09-02 | 2008-09-03 | 59 | 0d |  | Block Masonry Subcontractor | 16h |
| 61 | 6.13 | Lumber Delivery |  | 1d | 2008-09-01 | 2008-09-01 | 58 | 1d | 0d | Lumber Supplier | 8h |
| 62 | 6.14 | Waterproofing and Drain Tile |  | 1d | 2008-09-02 | 2008-09-02 | 61 | 1d |  | Waterproofing Subcontractor | 8h |
